# TNB Analytics Data System Phase 1

Schedule from MS Project, 2016-08-29 to 2017-01-11, A marks actual dates.

## Calendars

- Standard: Mon-Fri 08:00-12:00, 13:00-17:00; Sat-Sun off. Exceptions (off unless hours are given): 2016-10-24 (Chulalongkorn Day), 2016-12-05 (King Birth Day).

## Resources

| Resource |
| --- |
| Nattapong Laiyapark |
| Perasan Akarajariyakul |
| Supawadee Klommit |
| Nattida Harimao |
| Chonlathep Phosaithong |
| TeleSafe Asia |
| Freddy Marie |
| TNB User |
| Muneo Tashiro |

## Schedule

| ID | WBS | Task | Type | Duration | Start | Finish | Predecessors | Complete | Remaining | Total slack | Free slack | Constraint | Resources | Work | Actual work |
| --- | --- | --- | --- | --- | --- | --- | --- | --- | --- | --- | --- | --- | --- | --- | --- |
| 1 | 1 | **TNB Analytic Data System Phase 1 (Sale & Accouting)** |  | 96d | 2016-08-29 A | 2017-01-11 |  | 2% | 94.17d | 0d |  |  |  | 2320h | 16h |
| 2 | 1.1 | Prepare Project Plan |  | 2d | 2016-08-29 A | 2016-08-31 A |  | 100% |  |  |  | start no earlier than 2016-08-29 | Nattapong Laiyapark | 16h | 16h |
| 3 | 1.2 | **Requirement Gathering** |  | 7d | 2016-08-29 | 2016-09-06 |  |  |  | 89d |  |  |  | 328h |  |
| 4 | 1.2.1 | **Business Requriements** |  | 7d | 2016-08-29 | 2016-09-06 |  |  |  | 89d |  |  |  | 328h |  |
| 5 | 1.2.1.1 | BI requirements identified |  | 4d | 2016-08-29 | 2016-09-01 |  |  |  | 92d |  | finish no earlier than 2016-09-01 | Chonlathep Phosaithong; TeleSafe Asia; Muneo Tashiro; TNB User; Nattida Harimao; Nattapong Laiyapark; Perasan Akarajariyakul; Supawadee Klommit | 256h |  |
| 6 | 1.2.1.2 | Create BI user requirements document |  | 1d | 2016-09-02 | 2016-09-02 |  |  |  | 91d |  | finish no earlier than 2016-09-02 | Supawadee Klommit; TeleSafe Asia | 16h |  |
| 7 | 1.2.1.3 | Review BI user requirements document |  | 1d | 2016-09-05 | 2016-09-05 |  |  |  | 90d |  | finish no earlier than 2016-09-05 | Nattapong Laiyapark; TeleSafe Asia; Freddy Marie; Muneo Tashiro; TNB User | 40h |  |
| 8 | 1.2.1.4 | Incorporate changes to requirements document |  | 1d | 2016-09-06 | 2016-09-06 |  |  |  | 89d |  | finish no earlier than 2016-09-06 | TeleSafe Asia; Supawadee Klommit | 16h |  |
| 9 | 1.2.1.5 | Sign off BI requirements document | milestone | 0d | 2016-09-06 | 2016-09-06 |  |  |  | 89d |  | start no earlier than 2016-09-06 | Muneo Tashiro; TNB User |  |  |
| 10 | 1.2.1.6 | BI requirements document approved | milestone | 0d | 2016-09-06 | 2016-09-06 |  |  |  | 89d |  | start no earlier than 2016-09-06 | Muneo Tashiro |  |  |
| 11 | 1.3 | **Planning and Design** |  | 18d | 2016-09-07 | 2016-09-30 |  |  |  | 0d |  |  |  | 512h |  |
| 12 | 1.3.1 | Review Data Sources |  | 1d | 2016-09-07 | 2016-09-07 |  |  |  | 55d | 17d | finish no earlier than 2016-09-07 | Perasan Akarajariyakul; Chonlathep Phosaithong; Nattida Harimao; Nattapong Laiyapark; Supawadee Klommit | 40h |  |
| 13 | 1.3.2 | **Design ETL Framework** |  | 3d | 2016-09-07 | 2016-09-09 |  |  |  |  |  |  |  | 16h |  |
| 14 | 1.3.2.1 | Develop data model for ETL framework |  | 2d | 2016-09-07 | 2016-09-08 |  |  |  | 87d | 0d | finish no earlier than 2016-09-08 | Nattapong Laiyapark | 16h |  |
| 15 | 1.3.2.2 | ETL Framework design complete | milestone | 0d | 2016-09-08 | 2016-09-08 | 14 |  |  | 87d |  | start no earlier than 2016-08-23 |  |  |  |
| 16 | 1.3.3 | **Design Warehouse, Mart, ODS Data Model** |  | 5d | 2016-09-08 | 2016-09-14 |  |  |  | 38d | 12d |  |  | 80h |  |
| 17 | 1.3.3.1 | Design data model and create SQL database for TNB data sources |  | 5d | 2016-09-08 | 2016-09-14 |  |  |  | 38d | 0d | finish no earlier than 2016-09-14 | Nattapong Laiyapark; Perasan Akarajariyakul | 80h |  |
| 18 | 1.3.3.2 | Warehouse, Mart, ODS Data Model design complete | milestone | 0d | 2016-09-14 | 2016-09-14 | 17 |  |  | 50d |  | start no earlier than 2016-08-27 |  |  |  |
| 19 | 1.3.4 | **Source to target data mapping document** |  | 3d | 2016-09-15 | 2016-09-19 |  |  |  | 38d | 9d |  |  | 96h |  |
| 20 | 1.3.4.1 | Prepare data mapping document for TNB data sources |  | 3d | 2016-09-15 | 2016-09-19 | 17 |  |  | 38d | 0d | start no earlier than 2016-09-12 | Chonlathep Phosaithong; Nattida Harimao; Perasan Akarajariyakul; Supawadee Klommit | 96h |  |
| 21 | 1.3.4.2 | Source to target data mapping document complete | milestone | 0d | 2016-09-19 | 2016-09-19 | 20 |  |  | 38d | 0d | start no earlier than 2016-09-15 |  |  |  |
| 22 | 1.3.5 | **Design DI Proof Of Concept (POC)** |  | 9d | 2016-09-20 | 2016-09-30 |  |  |  | 38d | 0d |  |  | 280h |  |
| 23 | 1.3.5.1 | **Level1 job - JobControl (Built-in, throttling CDC interval)** |  | 1d | 2016-09-20 | 2016-09-20 |  |  |  | 38d |  |  |  | 8h |  |
| 24 | 1.3.5.1.1 | Level1 job - JobControl (Built-in, throttling CDC interval) |  | 1d | 2016-09-20 | 2016-09-20 | 21 |  |  | 38d | 0d | start no earlier than 2016-09-05 | Nattapong Laiyapark | 8h |  |

| ID | WBS | Task | Type | Duration | Start | Finish | Predecessors | Total slack | Free slack | Constraint | Resources | Work |
| --- | --- | --- | --- | --- | --- | --- | --- | --- | --- | --- | --- | --- |
| 25 | 1.3.5.2 | **Level2 job - Generic extract using BCP, Prepare Staging** |  | 1d | 2016-09-21 | 2016-09-21 |  | 38d |  |  |  | 32h |
| 26 | 1.3.5.2.1 | Level2 job - Generic extract using BCP, Prepare Staging |  | 1d | 2016-09-21 | 2016-09-21 | 24 | 38d | 0d | start no earlier than 2016-09-08 | Chonlathep Phosaithong; Nattida Harimao; Supawadee Klommit; Perasan Akarajariyakul | 32h |
| 27 | 1.3.5.3 | **Level3 job - Tranfromations and load to DWH** |  | 2d | 2016-09-22 | 2016-09-23 |  | 38d |  |  |  | 64h |
| 28 | 1.3.5.3.1 | Level3 job - Tranfromations and load to DWH |  | 2d | 2016-09-22 | 2016-09-23 | 26 | 38d | 0d | start no earlier than 2016-09-12 | Chonlathep Phosaithong; Nattida Harimao; Perasan Akarajariyakul; Supawadee Klommit | 64h |
| 29 | 1.3.5.4 | **Level4 job - Tranfromations and load to DMT & ODS** |  | 2d | 2016-09-26 | 2016-09-27 |  | 38d |  |  |  | 64h |
| 30 | 1.3.5.4.1 | Level4 job - Tranfromations and load to DMT & ODS |  | 2d | 2016-09-26 | 2016-09-27 | 28 | 38d | 0d | finish no earlier than 2016-09-27 | Chonlathep Phosaithong; Nattida Harimao; Perasan Akarajariyakul; Supawadee Klommit | 64h |
| 31 | 1.3.5.5 | **Level5 job - Log job performance counters** |  | 1d | 2016-09-28 | 2016-09-28 |  | 38d |  |  |  | 32h |
| 32 | 1.3.5.5.1 | Level4 job - Log job performance counters |  | 1d | 2016-09-28 | 2016-09-28 | 30 | 38d | 0d | finish no earlier than 2016-09-28 | Chonlathep Phosaithong; Nattida Harimao; Perasan Akarajariyakul; Supawadee Klommit | 32h |
| 33 | 1.3.5.6 | **Sequencer job to combine level1 through level4** |  | 1d | 2016-09-29 | 2016-09-29 |  | 38d | 0d |  |  | 40h |
| 34 | 1.3.5.6.1 | Sequencer job to combine level1 through level4 |  | 1d | 2016-09-29 | 2016-09-29 | 32 | 38d |  | start no earlier than 2016-09-19 | Chonlathep Phosaithong; Nattida Harimao; Nattapong Laiyapark; Perasan Akarajariyakul; Supawadee Klommit | 40h |
| 35 | 1.3.5.7 | **Review jobs and make necessary modifications to design (if any)** |  | 1d | 2016-09-30 | 2016-09-30 |  | 38d | 0d |  |  | 40h |
| 36 | 1.3.5.7.1 | Review jobs and make necessary modifications to design |  | 1d | 2016-09-30 | 2016-09-30 | 33 | 38d |  | start no earlier than 2016-09-21 | Chonlathep Phosaithong; Nattida Harimao; Nattapong Laiyapark; Perasan Akarajariyakul; Supawadee Klommit | 40h |
| 37 | 1.3.5.8 | Proof Of Concept (POC) Complete | milestone | 0d | 2016-09-30 | 2016-09-30 | 35 | 38d |  | start no earlier than 2016-09-23 |  |  |
| 38 | 1.3.6 | Planning and Design Complete | milestone | 0d | 2016-09-30 | 2016-09-30 | 12, 13, 16, 19, 22 | 38d | 0d | start no earlier than 2016-09-23 |  |  |
| 39 | 1.4 | **Development of DI Data warehouse Layer** |  | 14d | 2016-10-03 | 2016-10-20 |  | 35d |  |  |  | 320h |
| 40 | 1.4.1 | Staging Area Development |  | 2d | 2016-10-03 | 2016-10-04 | 38 | 38d | 0d |  | Chonlathep Phosaithong; Nattida Harimao; Nattapong Laiyapark; Perasan Akarajariyakul; Supawadee Klommit | 80h |
| 41 | 1.4.2 | Dimensions Development |  | 3d | 2016-10-05 | 2016-10-07 | 40 | 38d | 0d | finish no earlier than 2016-10-07 | Nattida Harimao; Supawadee Klommit; Chonlathep Phosaithong | 72h |
| 42 | 1.4.3 | Facts Development |  | 3d | 2016-10-10 | 2016-10-12 | 40, 41 | 38d | 0d | finish no earlier than 2016-10-12 | Perasan Akarajariyakul; Nattapong Laiyapark | 48h |
| 43 | 1.4.4 | Data Marts Development |  | 3d | 2016-10-13 | 2016-10-17 | 42 | 38d | 3d | finish no earlier than 2016-10-17 | Perasan Akarajariyakul; Nattapong Laiyapark | 48h |
| 44 | 1.4.5 | Operation Data Store Development |  | 3d | 2016-10-18 | 2016-10-20 | 40 | 35d | 0d | finish no earlier than 2016-10-20 | Chonlathep Phosaithong; Supawadee Klommit; Nattida Harimao | 72h |
| 45 | 1.4.6 | Development of DI Data warehouse Layer Complete | milestone | 0d | 2016-10-20 | 2016-10-20 | 43, 44, 40, 41, 42 | 35d | 0d | start no earlier than 2016-10-03 |  |  |
| 46 | 1.5 | **SIT on Development Environment** |  | 5d | 2016-10-21 | 2016-10-28 |  | 35d | 0d |  |  | 96h |
| 47 | 1.5.1 | Prepare SIT test plan |  | 1d | 2016-10-21 | 2016-10-21 | 45 | 35d | 0d | start no earlier than 2016-10-14 | Nattapong Laiyapark | 8h |
| 48 | 1.5.2 | Define jobs and schedule in Kettle |  | 2d | 2016-10-25 | 2016-10-26 | 47 | 35d | 0d | finish no earlier than 2016-10-26 | Chonlathep Phosaithong; Perasan Akarajariyakul | 32h |
| 49 | 1.5.3 | Run all jobs in SIT |  | 1d | 2016-10-27 | 2016-10-27 | 48 | 35d | 0d | start no earlier than 2016-10-19 | Chonlathep Phosaithong; Perasan Akarajariyakul | 16h |
| 50 | 1.5.4 | Review results, bug fixes and rerun SIT cycle |  | 1d | 2016-10-28 | 2016-10-28 | 49 | 35d | 0d | start no earlier than 2016-10-20 | Chonlathep Phosaithong; Nattida Harimao; Nattapong Laiyapark; Perasan Akarajariyakul; Supawadee Klommit | 40h |
| 51 | 1.5.5 | SIT on Development Environment complete | milestone | 0d | 2016-10-28 | 2016-10-28 | 50 | 35d |  | start no earlier than 2016-10-25 |  |  |

| ID | WBS | Task | Type | Duration | Start | Finish | Predecessors | Total slack | Free slack | Constraint | Resources | Work |
| --- | --- | --- | --- | --- | --- | --- | --- | --- | --- | --- | --- | --- |
| 52 | 1.6 | **BI Software Server & Installation** |  | 2d | 2016-09-07 | 2016-09-08 |  | 87d |  |  |  | 16h |
| 53 | 1.6.1 | BI Software Server & Installation |  | 2d | 2016-09-07 | 2016-09-08 |  | 87d | 0d | finish no earlier than 2016-09-08 | TeleSafe Asia | 16h |
| 54 | 1.6.2 | BI Software Server & Installation complete | milestone | 0d | 2016-09-08 | 2016-09-08 | 53 | 87d |  |  |  |  |
| 55 | 1.7 | **Development of DI Semantic Layer ( POC )** |  | 3d | 2016-10-31 | 2016-11-03 |  | 43.94d | 0.94d |  |  | 24h |
| 56 | 1.7.1 | BI Dataset Integration, Cleasing, and Business Rules |  | 3d | 2016-10-31 | 2016-11-03 | 46 | 43.94d | 0d | start no earlier than 2016-10-31 | TeleSafe Asia | 24h |
| 57 | 1.7.2 | Development of DI Semantic Layer Complete | milestone | 0d | 2016-11-03 | 2016-11-03 | 56 | 43.94d |  | start no earlier than 2016-10-20 |  |  |
| 58 | 1.8 | **Development of BI Semantic layer, BI Reports & Unit Testing ( POC )** |  | 5d | 2016-11-04 | 2016-11-10 |  | 6d |  |  |  | 40h |
| 59 | 1.8.1 | Dashboard & Report of BI Semantic Procedures development and unit testing |  | 3d | 2016-11-04 | 2016-11-08 | 55 | 43d | 0d | finish no earlier than 2016-11-08 | TeleSafe Asia | 24h |
| 60 | 1.8.2 | Fix BI dashboard & Report |  | 2d | 2016-11-09 | 2016-11-10 | 59 | 43d |  | finish no earlier than 2016-11-10 | TeleSafe Asia | 16h |
| 61 | 1.8.3 | Development of BI Semantic layer, BI Reports & Unit Testing complete | milestone | 0d | 2016-11-10 | 2016-11-10 |  | 1.94d | 0.94d | start no earlier than 2016-11-10 |  |  |
| 62 | 1.9 | **BI Developer training on Semantics View** |  | 15d | 2016-11-11 | 2016-12-01 |  | 1d |  |  |  | 112h |
| 63 | 1.9.1 | Report Developer or Editor Trainning |  | 2d | 2016-11-11 | 2016-11-14 | 61 | 1d | 0d | finish no earlier than 2016-11-14 | TeleSafe Asia | 16h |
| 64 | 1.9.2 | Data Set creatation |  | 4d | 2016-11-15 | 2016-11-18 | 63 | 1d | 0d | finish no earlier than 2016-11-18 | TeleSafe Asia | 32h |
| 65 | 1.9.3 | Developing and Pubishing reports |  | 5d | 2016-11-21 | 2016-11-25 | 64 | 1d | 0d |  | TeleSafe Asia | 40h |
| 66 | 1.9.4 | Dashboard managing and developing |  | 1d | 2016-11-28 | 2016-11-28 | 65 | 1d |  |  | TeleSafe Asia | 8h |
| 67 | 1.9.5 | Administrator and configuration |  | 2d | 2016-11-30 | 2016-12-01 | 66 | 0d |  | finish no earlier than 2016-12-01 | TeleSafe Asia | 16h |
| 68 | 1.9.6 | BI Developer training on Semantics View complete | milestone | 0d | 2016-12-01 | 2016-12-01 |  | 28.94d |  | start no earlier than 2016-12-01 |  |  |
| 69 | 1.10 | **Full Development of DI Semantic Layer** |  | 3d | 2016-12-02 | 2016-12-07 |  | 0d |  |  |  | 24h |
| 70 | 1.10.1 | BI Dataset Integration, Cleasing, and Business Rules |  | 3d | 2016-12-02 | 2016-12-07 | 67 | 0d |  | start no earlier than 2016-10-17 | TeleSafe Asia | 24h |
| 71 | 1.10.2 | Full Development of DI Semantic Layer Complete | milestone | 0d | 2016-12-07 | 2016-12-07 | 70 | 0d |  | start no earlier than 2016-10-20 |  |  |
| 72 | 1.11 | **Full Development of BI Semantic layer, BI Reports & Unit Testing** |  | 8d | 2016-12-08 | 2016-12-19 |  | 0d |  |  |  | 256h |
| 73 | 1.11.1 | Dashboard & Report of BI Semantic Procedures development and unit testing |  | 5d | 2016-12-08 | 2016-12-14 | 71 | 0d |  | start no earlier than 2016-11-07 | TeleSafe Asia; Nattida Harimao; Supawadee Klommit; Nattapong Laiyapark | 160h |
| 74 | 1.11.2 | Fix BI dashboard & Report |  | 3d | 2016-12-15 | 2016-12-19 | 73 | 0d |  | finish no earlier than 2016-12-19 | TeleSafe Asia; Nattida Harimao; Supawadee Klommit; Nattapong Laiyapark | 96h |
| 75 | 1.11.3 | Full Development of BI Semantic layer, BI Reports & Unit Testing complete | milestone | 0d | 2016-12-19 | 2016-12-19 | 74 | 0d |  | start no earlier than 2016-11-14 |  |  |

| ID | WBS | Task | Type | Duration | Start | Finish | Predecessors | Total slack | Free slack | Constraint | Resources | Work |
| --- | --- | --- | --- | --- | --- | --- | --- | --- | --- | --- | --- | --- |
| 76 | 1.12 | **DI Data Loading in Production Envionment (UAT)** |  | 5d | 2016-10-31 | 2016-11-04 |  | 35d |  |  |  | 72h |
| 77 | 1.12.1 | Prepare all production environment |  | 1d | 2016-10-31 | 2016-10-31 | 46 | 35d | 0d | start no earlier than 2016-10-20 | Nattapong Laiyapark | 8h |
| 78 | 1.12.2 | DI code migration to production environment |  | 2d | 2016-11-01 | 2016-11-02 | 77 | 35d | 0d | start no earlier than 2016-10-20 | Chonlathep Phosaithong; Perasan Akarajariyakul | 32h |
| 79 | 1.12.3 | **Run DI jobs from production source systems (Full)** |  | 2d | 2016-11-03 | 2016-11-04 | 78 | 35d | 0d |  |  | 32h |
| 80 | 1.12.3.1 | Run DI jobs from production source systems (Full) |  | 2d | 2016-11-03 | 2016-11-04 | 78 | 35d |  | start no earlier than 2016-10-24 | Chonlathep Phosaithong; Perasan Akarajariyakul | 32h |
| 81 | 1.12.4 | DI Data loading in Production (UAT) environment Complete | milestone | 0d | 2016-11-04 | 2016-11-04 | 79 | 35d |  | start no earlier than 2016-10-26 |  |  |
| 82 | 1.13 | **BI Data Loading in Production Envionment (UAT)** |  | 5d | 2016-12-20 | 2016-12-26 |  | 0d |  |  |  | 88h |
| 83 | 1.13.1 | Prepare all production environment |  | 1d | 2016-12-20 | 2016-12-20 | 75 | 0d |  | start no earlier than 2016-10-20 | Nattapong Laiyapark | 8h |
| 84 | 1.13.2 | BI code migration to production environment |  | 2d | 2016-12-21 | 2016-12-22 | 75, 83 | 0d |  | start no earlier than 2016-10-20 | Nattida Harimao; Supawadee Klommit | 32h |
| 85 | 1.13.3 | **Run BI data set loading jobs (Semantic layer)** |  | 2d | 2016-12-23 | 2016-12-26 | 84 | 0d |  |  |  | 48h |
| 86 | 1.13.3.1 | Run BI data set loading jobs (Semantic layer) |  | 2d | 2016-12-23 | 2016-12-26 | 84 | 0d |  | start no earlier than 2016-10-24 | TeleSafe Asia; Nattida Harimao; Supawadee Klommit | 48h |
| 87 | 1.13.4 | BI Data loading in Production (UAT) environment Complete | milestone | 0d | 2016-12-26 | 2016-12-26 | 85 | 0d |  | start no earlier than 2016-10-26 |  |  |
| 88 | 1.14 | **BI Semantic layer & BI Reports in Production Environment (UAT)** |  | 2d | 2016-12-27 | 2016-12-28 |  | 0d |  |  |  | 48h |
| 89 | 1.14.1 | Dashboard & Report of BI Semantic Procedures deployment |  | 2d | 2016-12-27 | 2016-12-28 | 76, 82 | 0d |  | finish no earlier than 2016-10-31 | Supawadee Klommit; Nattida Harimao; TeleSafe Asia | 48h |
| 90 | 1.14.2 | BI Semantic layer & BI Reports in Production Environment (UAT) Complete | milestone | 0d | 2016-12-28 | 2016-12-28 | 89 | 0d |  | start no earlier than 2016-10-31 |  |  |
| 91 | 1.15 | **UAT on Production Environment** |  | 8d | 2016-12-29 | 2017-01-09 |  | 0d |  |  |  | 352h |
| 92 | 1.15.1 | Prepare UAT Test Plan |  | 1d | 2016-12-29 | 2016-12-29 | 88 | 0d |  | start no earlier than 2016-11-17 | Nattapong Laiyapark; TeleSafe Asia | 16h |
| 93 | 1.15.2 | UAT on process, dashboards and additional reports |  | 2d | 2016-12-30 | 2017-01-02 | 92 | 0d |  | start no earlier than 2016-11-21 | TeleSafe Asia; Chonlathep Phosaithong; Nattida Harimao; Nattapong Laiyapark; Perasan Akarajariyakul; Supawadee Klommit | 96h |
| 94 | 1.15.3 | Fix any BI issues found |  | 2d | 2017-01-03 | 2017-01-04 | 93 | 0d |  | start no earlier than 2016-11-23 | TeleSafe Asia; Chonlathep Phosaithong; Nattida Harimao; Nattapong Laiyapark; Perasan Akarajariyakul; Supawadee Klommit | 96h |
| 95 | 1.15.4 | Fix any Semantic DI issues found |  | 2d | 2017-01-05 | 2017-01-06 | 94 | 0d |  | start no earlier than 2016-11-25 | TeleSafe Asia; Chonlathep Phosaithong; Nattida Harimao; Nattapong Laiyapark; Perasan Akarajariyakul; Supawadee Klommit | 96h |
| 96 | 1.15.5 | Correct any data issues (if any) |  | 1d | 2017-01-09 | 2017-01-09 | 95 | 0d |  | start no earlier than 2016-11-29 | TeleSafe Asia; Chonlathep Phosaithong; Nattida Harimao; Nattapong Laiyapark; Perasan Akarajariyakul; Supawadee Klommit | 48h |
| 97 | 1.15.6 | UAT on Production environment Complete | milestone | 0d | 2017-01-09 | 2017-01-09 | 96 | 0d |  | start no earlier than 2016-12-01 |  |  |
| 98 | 1.16 | **User & Developer training on BI and Semantics View** |  | 2d | 2017-01-10 | 2017-01-11 |  | 0d |  |  |  | 16h |
| 99 | 1.16.1 | Users training on BI and Semantics View & Editor |  | 2d | 2017-01-10 | 2017-01-11 | 91 | 0d |  | start no earlier than 2016-12-01 | TeleSafe Asia | 16h |
| 100 | 1.16.2 | User & Developer training on BI and Semantics View Complete | milestone | 0d | 2017-01-11 | 2017-01-11 | 99 | 0d |  | start no earlier than 2016-12-08 |  |  |
| 101 | 1.17 | TNB Analytic Data System Phase 1 - Go Live | milestone | 0d | 2017-01-11 | 2017-01-11 | 98 | 0d |  | start no earlier than 2016-12-14 |  |  |
